# TaiCauTrucPlan

Schedule from MS Project, 2020-11-02 to 2021-01-08, A marks actual dates.

## Calendars

- Standard: Mon-Fri 08:00-12:00, 13:00-17:00; Sat-Sun off.

## Resources

| Resource |
| --- |
| VuongNHT |
| TrangNMT |
| GiangNC |

## Schedule

| ID | WBS | Task | Type | Duration | Start | Finish | Predecessors | Complete | Remaining | Total slack | Free slack | Resources | Work | Actual work |
| --- | --- | --- | --- | --- | --- | --- | --- | --- | --- | --- | --- | --- | --- | --- |
| 1 | 1 | **Lending Suite** |  | 50d | 2020-11-02 A | 2021-01-08 |  | 8% | 46.1d | 0d |  |  | 96h | 8h |
| 2 | 1.1 | Nghiên cứu BPM API |  | 5d | 2020-11-02 A | 2020-11-06 A |  | 100% |  |  |  |  |  |  |
| 3 | 1.2 | **Module Log** |  | 17d | 2020-11-09 A | 2020-12-01 |  | 4% | 16.26d | 28d |  |  | 64h | 8h |
| 4 | 1.2.1 | **Build Web Log** |  | 12d | 2020-11-09 A | 2020-11-24 |  | 6% | 11.33d | 0d |  |  | 64h | 8h |
| 5 | 1.2.1.1 | **Java API** |  | 4d | 2020-11-09 A | 2020-11-12 |  | 25% | 3d | 0d |  |  | 32h | 8h |
| 6 | 1.2.1.1.1 | Build các class call IBM REST API |  | 1d | 2020-11-09 A | 2020-11-09 A | 2 | 100% |  |  |  | TrangNMT | 8h | 8h |
| 7 | 1.2.1.1.2 | Viết function call API |  | 1d | 2020-11-10 | 2020-11-10 | 6 |  |  | 0d |  | TrangNMT | 8h |  |
| 8 | 1.2.1.1.3 | Handle 'Instance detail' |  | 1d | 2020-11-11 | 2020-11-11 | 6, 7 |  |  | 0d |  | TrangNMT | 8h |  |
| 9 | 1.2.1.1.4 | Viết function insert db |  | 1d | 2020-11-12 | 2020-11-12 | 6, 7, 8 |  |  | 0d |  | TrangNMT | 8h |  |
| 10 | 1.2.1.1.5 | Hoàn thành | milestone | 0d | 2020-11-12 | 2020-11-12 | 6FF, 7FF, 8FF, 9FF |  |  | 0d |  |  |  |  |
| 11 | 1.2.1.2 | **Store Proceduce** |  | 2d | 2020-11-13 | 2020-11-16 |  |  |  | 0d |  |  |  |  |
| 12 | 1.2.1.2.1 | SP insert từng table |  | 1d | 2020-11-13 | 2020-11-13 | 10 |  |  | 0d |  |  |  |  |
| 13 | 1.2.1.2.2 | SP insert theo transaction |  | 1d | 2020-11-16 | 2020-11-16 | 12 |  |  | 0d |  |  |  |  |
| 14 | 1.2.1.2.3 | Hoàn thành | milestone | 0d | 2020-11-16 | 2020-11-16 | 12FF, 13FF |  |  | 0d |  |  |  |  |
| 15 | 1.2.1.3 | **Schedule job pull instance** |  | 3d | 2020-11-17 | 2020-11-19 |  |  |  | 0d |  |  |  |  |
| 16 | 1.2.1.3.1 | Viết schedule job |  | 2d | 2020-11-17 | 2020-11-18 | 14 |  |  | 0d |  |  |  |  |
| 17 | 1.2.1.3.2 | Check performance api & db |  | 1d | 2020-11-19 | 2020-11-19 | 16 |  |  | 0d |  |  |  |  |
| 18 | 1.2.1.3.3 | Hoàn thành | milestone | 0d | 2020-11-19 | 2020-11-19 | 16FF, 17FF |  |  | 0d |  |  |  |  |
| 19 | 1.2.1.4 | **Viết lớp Communication (basic)** |  | 3d | 2020-11-20 | 2020-11-24 |  |  |  | 0d |  |  |  |  |
| 20 | 1.2.1.4.1 | Thiết kế kiến trúc |  | 2d | 2020-11-20 | 2020-11-23 | 18 |  |  | 0d |  |  |  |  |
| 21 | 1.2.1.4.2 | Send mail |  | 1d | 2020-11-24 | 2020-11-24 | 18, 20 |  |  | 0d |  |  |  |  |
| 22 | 1.2.1.4.3 | Send message to instance |  | 1d | 2020-11-24 | 2020-11-24 | 18, 20 |  |  | 0d |  |  |  |  |
| 23 | 1.2.1.4.4 | Hoàn thành | milestone | 0d | 2020-11-24 | 2020-11-24 | 21FF, 20FF, 22FF |  |  | 0d |  |  |  |  |
| 24 | 1.2.1.5 | **Viết giao diện web** |  | 5d | 2020-11-09 | 2020-11-13 |  |  |  | 7d |  |  | 32h |  |
| 25 | 1.2.1.5.1 | **Start web với Spring MVC** |  | 2d | 2020-11-09 | 2020-11-10 |  |  |  | 7d |  |  | 16h |  |
| 26 | 1.2.1.5.1.1 | Start Spring Boot |  | 1d | 2020-11-09 | 2020-11-09 | 2 |  |  | 7d | 0d | VuongNHT | 8h |  |
| 27 | 1.2.1.5.1.2 | Tạo simple template |  | 1d | 2020-11-10 | 2020-11-10 | 26 |  |  | 7d | 0d | VuongNHT | 8h |  |
| 28 | 1.2.1.5.1.3 | Hoàn thành | milestone | 0d | 2020-11-10 | 2020-11-10 | 26FF, 27FF |  |  | 7d | 0d |  |  |  |

| ID | WBS | Task | Type | Duration | Start | Finish | Predecessors | Total slack | Free slack | Constraint | Resources | Work |
| --- | --- | --- | --- | --- | --- | --- | --- | --- | --- | --- | --- | --- |
| 29 | 1.2.1.5.2 | **Binding data** |  | 3d | 2020-11-11 | 2020-11-13 |  | 7d |  |  |  | 16h |
| 30 | 1.2.1.5.2.1 | Viết các function call java api |  | 1d | 2020-11-11 | 2020-11-11 | 28 | 7d | 0d |  | VuongNHT | 8h |
| 31 | 1.2.1.5.2.2 | Mapping data to view |  | 1d | 2020-11-12 | 2020-11-12 | 30 | 7d | 0d |  | VuongNHT | 8h |
| 32 | 1.2.1.5.2.3 | Test hoàn thiện |  | 1d | 2020-11-13 | 2020-11-13 | 30, 31 | 7d | 0d |  |  |  |
| 33 | 1.2.1.5.2.4 | Hoàn thành | milestone | 0d | 2020-11-13 | 2020-11-13 | 30FF, 31FF, 32FF | 7d | 0d |  |  |  |
| 34 | 1.2.1.5.3 | Hoàn thành | milestone | 0d | 2020-11-13 | 2020-11-13 | 28FF, 33FF | 7d |  |  |  |  |
| 35 | 1.2.1.6 | Hoàn thành | milestone | 0d | 2020-11-24 | 2020-11-24 | 10FF, 18FF, 23FF, 34FF | 0d |  |  |  |  |
| 36 | 1.2.2 | **Test & Fix bug** |  | 5d | 2020-11-25 | 2020-12-01 |  | 28d |  |  |  |  |
| 37 | 1.2.2.1 | Test & fix bug |  | 5d | 2020-11-25 | 2020-12-01 | 35 | 28d | 0d | start no earlier than 2020-11-23 |  |  |
| 38 | 1.2.2.2 | Hoàn thành | milestone | 0d | 2020-12-01 | 2020-12-01 | 37FF | 28d | 0d | start no earlier than 2020-11-23 |  |  |
| 39 | 1.2.3 | Hoàn thành | milestone | 0d | 2020-12-01 | 2020-12-01 | 35FF, 38FF | 28d | 12d |  |  |  |
| 40 | 1.3 | **Core API** |  | 17d | 2020-11-25 | 2020-12-17 |  | 0d |  |  |  |  |
| 41 | 1.3.1 | **Khảo sát nghiệp vụ và tìm BPM API** |  | 5d | 2020-11-25 | 2020-12-01 |  | 0d |  |  |  |  |
| 42 | 1.3.1.1 | Phân tích & Thiết kế nghiệp vụ "Khởi tạo nhanh" |  | 3d | 2020-11-25 | 2020-11-27 | 35 | 0d |  | start no earlier than 2020-11-23 |  |  |
| 43 | 1.3.1.2 | Tính số api function |  | 1d | 2020-11-25 | 2020-11-25 | 42SS | 2d |  |  |  |  |
| 44 | 1.3.1.3 | Tìm các BPM API cần dùng |  | 2d | 2020-11-30 | 2020-12-01 | 42, 43 | 0d |  |  |  |  |
| 45 | 1.3.1.4 | Hoàn thành | milestone | 0d | 2020-12-01 | 2020-12-01 | 42FF, 43FF, 44FF | 0d |  |  |  |  |
| 46 | 1.3.2 | **Khảo sát Spring framework** |  | 3d | 2020-12-02 | 2020-12-04 |  | 0d |  |  |  |  |
| 47 | 1.3.2.1 | Spring api |  | 1d | 2020-12-02 | 2020-12-02 | 45 | 0d |  |  |  |  |
| 48 | 1.3.2.2 | Spring security |  | 1d | 2020-12-03 | 2020-12-03 | 47 | 0d |  |  |  |  |
| 49 | 1.3.2.3 | Spring JMS |  | 1d | 2020-12-04 | 2020-12-04 | 48 | 0d |  |  |  |  |
| 50 | 1.3.2.4 | Hoàn thành | milestone | 0d | 2020-12-04 | 2020-12-04 | 47FF, 48FF, 49FF | 0d |  |  |  |  |
| 51 | 1.3.3 | **Sample triển khai Spring API, Sercurity, JMS** |  | 3d | 2020-12-07 | 2020-12-09 |  | 0d |  |  |  |  |
| 52 | 1.3.3.1 | Sample Spring API |  | 1d | 2020-12-07 | 2020-12-07 | 50 | 0d |  |  |  |  |
| 53 | 1.3.3.2 | Sample Spring Security |  | 1d | 2020-12-07 | 2020-12-07 | 52SS | 0d |  |  |  |  |
| 54 | 1.3.3.3 | Samle call API qua Spring Security |  | 1d | 2020-12-08 | 2020-12-08 | 52, 53 | 0d |  |  |  |  |
| 55 | 1.3.3.4 | Sample call API qua Spring JMS |  | 1d | 2020-12-09 | 2020-12-09 | 52, 53, 54 | 0d |  |  |  |  |
| 56 | 1.3.3.5 | Hoàn thành | milestone | 0d | 2020-12-09 | 2020-12-09 | 52FF, 53FF, 54FF, 55FF | 0d |  |  |  |  |

| ID | WBS | Task | Type | Duration | Start | Finish | Predecessors | Total slack | Free slack | Resources | Work |
| --- | --- | --- | --- | --- | --- | --- | --- | --- | --- | --- | --- |
| 57 | 1.3.4 | **Triển khai Spring API** |  | 6d | 2020-12-10 | 2020-12-17 |  | 0d |  |  |  |
| 58 | 1.3.4.1 | **Build template** |  | 3d | 2020-12-10 | 2020-12-14 |  | 0d |  |  |  |
| 59 | 1.3.4.1.1 | Start REST API với Spring Boot |  | 1d | 2020-12-10 | 2020-12-10 | 56 | 0d |  |  |  |
| 60 | 1.3.4.1.2 | Thiết kế simple framework dạng class library |  | 1d | 2020-12-11 | 2020-12-11 | 59 | 0d |  |  |  |
| 61 | 1.3.4.1.3 | Viết các function dùng chung |  | 1d | 2020-12-14 | 2020-12-14 | 60 | 0d |  |  |  |
| 62 | 1.3.4.1.4 | Hoàn thành | milestone | 0d | 2020-12-14 | 2020-12-14 | 59FF, 60FF, 61FF | 0d |  |  |  |
| 63 | 1.3.4.2 | Triển khai function cho RLOS API |  | 2d | 2020-12-15 | 2020-12-16 | 62 | 0d |  |  |  |
| 64 | 1.3.4.3 | Unit Test |  | 1d | 2020-12-17 | 2020-12-17 | 63 | 0d |  |  |  |
| 65 | 1.3.4.4 | Hoàn thành | milestone | 0d | 2020-12-17 | 2020-12-17 | 62FF, 63FF, 64FF | 0d |  |  |  |
| 66 | 1.3.5 | Hoàn thành | milestone | 0d | 2020-12-17 | 2020-12-17 | 45FF, 50FF, 56FF, 65FF | 0d |  |  |  |
| 67 | 1.4 | Hoàn thành | milestone | 0d | 2020-12-17 | 2020-12-17 | 39FF, 66FF, 2 | 16d |  |  |  |
| 68 | 1.5 | **Tích hợp ODM** |  | 3d | 2020-11-13 | 2020-11-17 |  | 38d |  |  | 32h |
| 69 | 1.5.1 | Phân tích yêu cầu |  | 1d | 2020-11-13 | 2020-11-13 | 10 | 38d | 0d |  |  |
| 70 | 1.5.2 | Mapping BO |  | 2d | 2020-11-13 | 2020-11-16 | 69SS | 38d | 0d | TrangNMT | 16h |
| 71 | 1.5.3 | Call rule operation |  | 2d | 2020-11-13 | 2020-11-16 | 70SS | 38d | 0d | GiangNC | 16h |
| 72 | 1.5.4 | Test luồng gọi business rule |  | 1d | 2020-11-17 | 2020-11-17 | 70, 71, 69 | 38d | 0d |  |  |
| 73 | 1.5.5 | Hoàn thành | milestone | 0d | 2020-11-17 | 2020-11-17 | 70FF, 71FF, 72FF | 38d |  |  |  |
| 74 | 1.6 | **Tích hợp Xuất file** |  | 4d | 2020-11-25 | 2020-11-30 |  | 29d |  |  |  |
| 75 | 1.6.1 | Phân tích yêu cầu |  | 1d | 2020-11-25 | 2020-11-25 | 23 | 29d | 0d |  |  |
| 76 | 1.6.2 | Mapping BO |  | 3d | 2020-11-25 | 2020-11-27 | 75SS | 29d | 0d |  |  |
| 77 | 1.6.3 | Tạo service |  | 3d | 2020-11-25 | 2020-11-27 | 76SS | 29d | 0d |  |  |
| 78 | 1.6.4 | Test |  | 1d | 2020-11-30 | 2020-11-30 | 77, 76 | 29d | 0d |  |  |
| 79 | 1.6.5 | Hoàn thành | milestone | 0d | 2020-11-30 | 2020-11-30 | 75FF, 76FF, 77FF, 78FF | 29d |  |  |  |
| 80 | 1.7 | **Tích hợp database** |  | 16d | 2020-12-18 | 2021-01-08 |  | 0d |  |  |  |
| 81 | 1.7.1 | Phân tích yêu cầu sizing số service cần dùng |  | 3d | 2020-12-18 | 2020-12-22 | 66 | 0d |  |  |  |
| 82 | 1.7.2 | Viết service dùng chung (1 service) |  | 1d | 2020-12-23 | 2020-12-23 | 81 | 0d |  |  |  |
| 83 | 1.7.3 | Mapping data to service (8 function mapping/ngày) |  | 10d | 2020-12-24 | 2021-01-06 | 82 | 0d |  |  |  |
| 84 | 1.7.4 | Test full luồng gọi Database |  | 2d | 2021-01-07 | 2021-01-08 | 83 | 0d |  |  |  |
| 85 | 1.7.5 | Hoàn thành | milestone | 0d | 2021-01-08 | 2021-01-08 | 81FF, 82FF, 83FF, 84FF | 0d |  |  |  |
